# ME

Schedule from MS Project, 2018-07-24 to 2018-11-16, A marks actual dates.

## Calendars

- 标准: Mon-Fri 08:00-12:00, 13:00-17:00; Sat-Sun off. Exceptions (off unless hours are given): 2018-09-24 (中秋), 2018-09-29 to 2018-09-30 08:00-12:00, 13:00-17:00 (工作日), 2018-10-01 to 2018-10-07 (国庆).

## Resources

| Resource |
| --- |
| 客户 |

## Schedule

| ID | WBS | Task | Type | Duration | Start | Finish | Predecessors | Complete | Remaining | Total slack | Resources |
| --- | --- | --- | --- | --- | --- | --- | --- | --- | --- | --- | --- |
| 1 | 1 | **亚新科双环 MES III 期项目（批次管理系统）** |  | 80d? | 2018-07-24 A | 2018-11-16 |  | 58% | 33.38d? | 0d |  |
| 2 | 1.1 | **出入库** |  | 32d? | 2018-07-24 A | 2018-09-05 |  | 83% | 5.43d? | 48d |  |
| 3 | 1.1.1 | **粗检库** |  | 14d | 2018-07-24 A | 2018-08-10 A |  | 100% |  |  |  |
| 4 | 1.1.1.1 | **配置** |  | 2d | 2018-07-24 A | 2018-07-25 A |  | 100% |  |  |  |
| 5 | 1.1.1.1.1 | 半成品入库 | manual | 4h | 2018-07-24 A | 2018-07-24 A |  | 100% |  |  |  |
| 6 | 1.1.1.1.2 | 半成品配送 |  | 1d | 2018-07-24 A | 2018-07-25 A | 5 | 100% |  |  |  |
| 7 | 1.1.1.1.3 | 半成品出库 |  | 4h | 2018-07-25 A | 2018-07-25 A | 6 | 100% |  |  |  |
| 8 | 1.1.1.2 | 实施 | manual | 3d | 2018-08-08 A | 2018-08-10 A | 4 | 100% |  |  |  |
| 9 | 1.1.2 | **热磨半成品库房** |  | 7d? | 2018-08-07 A | 2018-08-15 A |  | 100% |  |  |  |
| 10 | 1.1.2.1 | 提供热磨半成品库房的相关数据 | milestone, manual | 0d | 2018-08-07 A | 2018-08-07 A |  | 100% |  |  | 客户 |
| 11 | 1.1.2.2 | **配置** |  | 2d | 2018-08-07 A | 2018-08-08 A | 10 | 100% |  |  |  |
| 12 | 1.1.2.2.1 | 半成品入库 |  | 4h | 2018-08-07 A | 2018-08-07 A |  | 100% |  |  |  |
| 13 | 1.1.2.2.2 | 半成品配送 |  | 1d | 2018-08-07 A | 2018-08-08 A | 12 | 100% |  |  |  |
| 14 | 1.1.2.2.3 | 半成品出库 |  | 4h | 2018-08-08 A | 2018-08-08 A | 13 | 100% |  |  |  |
| 15 | 1.1.2.3 | 实施 |  | 3d? | 2018-08-13 A | 2018-08-15 A | 11, 3 | 100% |  |  |  |
| 16 | 1.1.3 | **镀铬半成品库房** |  | 18d | 2018-08-10 A | 2018-09-04 |  | 70% | 5.4d | 49d |  |
| 17 | 1.1.3.1 | 提供镀铬半成品库房的相关数据 | milestone, manual | 0d | 2018-08-10 A | 2018-08-10 A |  | 100% |  |  | 客户 |
| 18 | 1.1.3.2 | **配置** |  | 2d | 2018-08-10 A | 2018-08-13 A | 17 | 100% |  |  |  |
| 19 | 1.1.3.2.1 | 半成品入库 |  | 4h | 2018-08-10 A | 2018-08-10 A |  | 100% |  |  |  |
| 20 | 1.1.3.2.2 | 半成品配送 |  | 1d | 2018-08-10 A | 2018-08-13 A | 19 | 100% |  |  |  |
| 21 | 1.1.3.2.3 | 半成品出库 |  | 4h | 2018-08-13 A | 2018-08-13 A | 20 | 100% |  |  |  |
| 22 | 1.1.3.3 | 镀铬库房满足运行条件 | milestone, manual | 0d | 2018-08-21 A | 2018-08-21 A |  | 100% |  |  |  |
| 23 | 1.1.3.4 | 实施、试运行 |  | 9d | 2018-08-21 A | 2018-08-31 | 17, 15, 22 | 50% | 4.5d | 51d |  |
| 24 | 1.1.3.5 | **改进** |  | 4d | 2018-08-30 A | 2018-09-04 A |  | 100% |  |  |  |
| 25 | 1.1.3.5.1 | 增加流转卡和跟踪卡打印内容的备份并重打功能 | manual | 1d | 2018-08-30 A | 2018-08-30 A |  | 100% |  |  |  |
| 26 | 1.1.3.5.2 | 提供维护部分产品的容器容量维护功能，并修改跟踪卡打印 | manual | 3d | 2018-08-31 A | 2018-09-04 A |  | 100% |  |  |  |

| ID | WBS | Task | Type | Duration | Start | Finish | Predecessors | Complete | Remaining | Total slack | Resources |
| --- | --- | --- | --- | --- | --- | --- | --- | --- | --- | --- | --- |
| 27 | 1.1.4 | **成品库房** |  | 19d? | 2018-08-10 A | 2018-09-05 A |  | 100% |  |  |  |
| 28 | 1.1.4.1 | 提供成品库房的相关数据 | milestone, manual | 0d | 2018-08-10 A | 2018-08-10 A |  | 100% |  |  | 客户 |
| 29 | 1.1.4.2 | **配置** |  | 0.5d | 2018-08-10 A | 2018-08-10 A | 28 | 100% |  |  |  |
| 30 | 1.1.4.2.1 | 产成品入库 |  | 4h | 2018-08-10 A | 2018-08-10 A |  | 100% |  |  |  |
| 31 | 1.1.4.3 | 产品库房满足运行条件 | milestone, manual | 0d | 2018-09-05 A | 2018-09-05 A |  | 100% |  |  |  |
| 32 | 1.1.4.4 | 实施 |  | 1d? | 2018-09-05 A | 2018-09-05 A | 28, 23, 31 | 100% |  |  |  |
| 33 | 1.2 | **生产数据采集** |  | 46d? | 2018-08-24 A | 2018-11-01 |  | 67% | 15.33d? | 0d |  |
| 34 | 1.2.1 | **调质** |  | 42d? | 2018-08-24 A | 2018-10-26 |  | 81% | 7.78d? | 0d |  |
| 35 | 1.2.1.1 | 提供加热炉相关数据 | milestone, manual | 0d | 2018-08-24 A | 2018-08-24 A |  | 100% |  |  | 客户 |
| 36 | 1.2.1.2 | 提供清洗炉相关数据 | milestone, manual | 0d | 2018-08-24 A | 2018-08-24 A |  | 100% |  |  | 客户 |
| 37 | 1.2.1.3 | 提供回火炉相关数据 | milestone, manual | 0d | 2018-08-24 A | 2018-08-24 A |  | 100% |  |  | 客户 |
| 38 | 1.2.1.4 | 发现用户提供的数据和预期有差异，还需进行沟通 | manual | 1d | 2018-09-05 A | 2018-09-05 A |  | 100% |  |  |  |
| 39 | 1.2.1.5 | **配置** |  | 8d? | 2018-09-06 A | 2018-09-17 A |  | 100% |  |  |  |
| 40 | 1.2.1.5.1 | 加热炉 |  | 2d? | 2018-09-06 A | 2018-09-07 A | 35, 38 | 100% |  |  |  |
| 41 | 1.2.1.5.2 | 清洗炉 |  | 2d? | 2018-09-10 A | 2018-09-11 A | 40, 36 | 100% |  |  |  |
| 42 | 1.2.1.5.3 | 回火炉 |  | 2d? | 2018-09-12 A | 2018-09-13 A | 41, 37 | 100% |  |  |  |
| 43 | 1.2.1.5.4 | 质量检查和确认 |  | 2d? | 2018-09-14 A | 2018-09-17 A | 42 | 100% |  |  |  |
| 44 | 1.2.1.6 | **开发** |  | 4d | 2018-09-19 A | 2018-09-25 A |  | 100% |  |  |  |
| 45 | 1.2.1.6.1 | 加热炉生产开发 | manual | 2d | 2018-09-19 A | 2018-09-20 A |  | 100% |  |  |  |
| 46 | 1.2.1.6.2 | 清洗炉、回火炉生产开发 |  | 2d | 2018-09-21 A | 2018-09-25 A | 45 | 100% |  |  |  |
| 47 | 1.2.1.7 | 测试 |  | 2d? | 2018-09-26 A | 2018-09-27 A | 39, 44 | 100% |  |  |  |
| 48 | 1.2.1.8 | 调质工序流程与生产部门讨论 | manual | 2d | 2018-10-09 A | 2018-10-10 A |  | 100% |  |  |  |
| 49 | 1.2.1.9 | 程序修改并测试 | manual | 5d | 2018-10-15 A | 2018-10-19 A |  | 100% |  |  |  |
| 50 | 1.2.1.10 | 调质工序程序升级 | manual | 1d | 2018-10-22 | 2018-10-22 | 49 |  |  |  |  |
| 51 | 1.2.1.11 | 实施并试运行 | manual | 4d | 2018-10-23 | 2018-10-26 | 50 |  |  |  |  |

| ID | WBS | Task | Type | Duration | Start | Finish | Predecessors | Total slack | Constraint | Resources |
| --- | --- | --- | --- | --- | --- | --- | --- | --- | --- | --- |
| 52 | 1.2.2 | **离子氮化** |  | 40d | 2018-09-03 | 2018-11-01 | 34 | 0d |  |  |
| 53 | 1.2.2.1 | 提供离子氮化相关数据 | milestone, manual | 0d | 2018-09-03 | 2018-09-03 |  |  |  | 客户 |
| 54 | 1.2.2.2 | 配置 | manual | 2d | 2018-10-24 | 2018-10-25 |  |  |  |  |
| 55 | 1.2.2.3 | 测试 | manual | 1d? | 2018-10-26 | 2018-10-26 | 54 |  | start no earlier than 2018-10-26 |  |
| 56 | 1.2.2.4 | 满足运行条件 | milestone, manual | 0d | 2018-10-30 | 2018-10-30 | 55 |  |  |  |
| 57 | 1.2.2.5 | 实施并试运行 |  | 3d | 2018-10-30 | 2018-11-01 | 56 | 0d |  |  |
| 58 | 1.2.3 | **镀铬** | inactive | 1d? | 2018-08-10 | 2018-08-10 |  | 55d |  |  |
| 59 | 1.2.3.1 | 确认需求内容 | inactive | 1d? | 2018-08-10 | 2018-08-10 |  | 55d | start no earlier than 2018-08-10 |  |
| 60 | 1.3 | 文档交付物编写 | manual | 5d | 2018-11-02 | 2018-11-08 | 33 |  |  |  |
| 61 | 1.4 | 待解决项关闭 | manual | 10d? | 2018-11-02 | 2018-11-15 | 33 |  |  |  |
| 62 | 1.5 | 验收 |  | 1d? | 2018-11-16 | 2018-11-16 | 60, 61 | 0d |  |  |
